# Advanced Tracking C_start

How a schedule from MS Project changed from version to version. A marks actual dates.

## Version 1 (saved 2025-09-27, file Advanced Tracking C_Start.mpp)

| ID | WBS | Task | Duration | Start | Finish | Predecessors | Complete | Total float | Constraint |
| --- | --- | --- | --- | --- | --- | --- | --- | --- | --- |
| 1 | 1 | **Họp nhân viên biên tập** | 60.12d | 2015-04-13 08:00 A | 2015-07-06 09:00 |  | 54% | 103.88d |  |
| 2 |  | Editorial staff meeting 1 | 1h | 2015-04-13 08:00 A | 2015-04-13 09:00 A |  | 100% |  | start no earlier than 2015-04-13 08:00 |
| 3 |  | Editorial staff meeting 2 | 1h | 2015-04-20 08:00 A | 2015-04-20 09:00 A |  | 100% |  | start no earlier than 2015-04-20 08:00 |
| 4 |  | Editorial staff meeting 3 | 1h | 2015-04-27 08:00 A | 2015-04-27 09:00 A |  | 100% |  | start no earlier than 2015-04-27 08:00 |
| 5 |  | Editorial staff meeting 4 | 1h | 2015-05-04 08:00 A | 2015-05-04 09:00 A |  | 100% |  | start no earlier than 2015-05-04 08:00 |
| 6 |  | Editorial staff meeting 5 | 1h | 2015-05-11 08:00 A | 2015-05-11 09:00 A |  | 100% |  | start no earlier than 2015-05-11 08:00 |
| 7 |  | Editorial staff meeting 6 | 1h | 2015-05-18 08:00 A | 2015-05-18 09:00 A |  | 100% |  | start no earlier than 2015-05-18 08:00 |
| 8 |  | Editorial staff meeting 7 | 1h | 2015-05-25 08:00 A | 2015-05-25 09:00 A |  | 100% |  | start no earlier than 2015-05-25 08:00 |
| 9 |  | Editorial staff meeting 8 | 1h | 2015-06-01 08:00 | 2015-06-01 09:00 |  |  | 128.88d | start no earlier than 2015-06-01 08:00 |
| 10 |  | Editorial staff meeting 9 | 1h | 2015-06-08 08:00 | 2015-06-08 09:00 |  |  | 123.88d | start no earlier than 2015-06-08 08:00 |
| 11 |  | Editorial staff meeting 10 | 1h | 2015-06-15 08:00 | 2015-06-15 09:00 |  |  | 118.88d | start no earlier than 2015-06-15 08:00 |
| 12 |  | Editorial staff meeting 11 | 1h | 2015-06-22 08:00 | 2015-06-22 09:00 |  |  | 113.88d | start no earlier than 2015-06-22 08:00 |
| 13 |  | Editorial staff meeting 12 | 1h | 2015-06-29 08:00 | 2015-06-29 09:00 |  |  | 108.88d | start no earlier than 2015-06-29 08:00 |
| 14 |  | Editorial staff meeting 13 | 1h | 2015-07-06 08:00 | 2015-07-06 09:00 |  |  | 103.88d | start no earlier than 2015-07-06 08:00 |
| 15 | 2 | **Sự tiếp nhận** | 37d | 2015-04-06 08:00 A | 2015-05-26 17:00 A |  | 100% |  |  |
| 16 |  | Manuscript received | 0d | 2015-04-06 08:00 A | 2015-04-06 08:00 A |  | 100% |  |  |
| 17 |  | Content edit | 15d | 2015-04-06 08:00 A | 2015-04-30 10:00 A | 16 | 100% |  |  |
| 18 |  | Original art review | 10.25d | 2015-04-23 10:00 A | 2015-05-07 12:00 A | 17FS-5d | 100% |  |  |
| 19 |  | Author review of content edit | 13.5d | 2015-05-07 13:00 A | 2015-05-26 17:00 A | 17, 18 | 100% |  |  |
| 20 |  | Handoff to Editorial | 0d | 2015-05-26 17:00 A | 2015-05-26 17:00 A | 19 | 100% |  |  |
| 21 | 3 | **Nhận bản thảo** | 28d | 2015-05-27 08:00 A | 2015-07-03 17:00 | 15 | 50% | 1.75d |  |
| 22 |  | Biên tập nội dung | 5d | 2015-05-27 08:00 A | 2015-06-02 17:00 A |  | 100% |  |  |
| 23 |  | Bản sao | 10.25d | 2015-06-03 08:00 A | 2015-06-17 10:00 A | 22 | 100% |  |  |
| 24 |  | Author review of copyedit | 10d | 2015-06-17 10:00 | 2015-07-01 10:00 | 23 |  | 1.75d |  |
| 25 |  | Copyedit incorp | 5.12d | 2015-06-26 15:00 | 2015-07-03 17:00 | 24FS-2.5% |  | 1.75d |  |
| 26 |  | Handoff to Production | 0d | 2015-07-03 17:00 | 2015-07-03 17:00 | 25 |  | 1.75d |  |
| 27 | 4 | **Design and Production** | 58d | 2015-07-06 08:00 | 2015-09-23 17:00 | 21 |  | 1.75d |  |
| 28 |  | Set pages | 15d | 2015-07-06 08:00 | 2015-07-24 17:00 |  |  | 1.75d |  |
| 29 |  | Interior illustration design | 15.25d | 2015-07-06 08:00 | 2015-07-27 10:00 | 28SS |  | 1.75d |  |
| 30 | 4.3 | **1st Pages review** | 30d | 2015-07-27 10:00 | 2015-09-07 10:00 | 29 |  | 1.75d |  |
| 31 |  | Proofread and index | 10d | 2015-07-27 10:00 | 2015-08-10 10:00 |  |  | 1.75d | start no earlier than 2015-07-17 08:00 |
| 32 |  | Incorporate 1st Pages review | 10d | 2015-08-10 10:00 | 2015-08-24 10:00 | 31 |  | 1.75d |  |
| 33 |  | Send proofed pages to Production | 0d | 2015-08-24 10:00 | 2015-08-24 10:00 | 32 |  | 1.75d |  |
| 34 |  | Enter page corrections and index | 5d | 2015-08-24 10:00 | 2015-08-31 10:00 | 33 |  | 1.75d |  |
| 35 |  | Cover design | 5d | 2015-08-31 10:00 | 2015-09-07 10:00 | 34 |  | 1.75d |  |
| 36 | 4.4 | **2nd Pages review** | 12.75d | 2015-09-07 10:00 | 2015-09-23 17:00 |  |  | 1.75d |  |
| 37 |  | Proof and review | 6.5d | 2015-09-07 10:00 | 2015-09-15 15:00 | 35 |  | 1.75d |  |
| 38 |  | Send proofed pages to Production | 0d | 2015-09-15 15:00 | 2015-09-15 15:00 | 37 |  | 1.75d |  |
| 39 |  | Final review | 5d | 2015-09-17 08:00 | 2015-09-23 17:00 | 38 |  | 2d |  |
| 40 | 4.5 | **Design book's companion website** | 10d | 2015-09-07 10:00 | 2015-09-21 10:00 | 30 |  | 4.75d |  |
| 41 |  | Create mockup | 4.5d | 2015-09-07 10:00 | 2015-09-17 10:00 |  |  | 4.75d |  |
| 42 |  | Review with author | 2d | 2015-09-17 10:00 | 2015-09-21 10:00 | 41 |  | 4.75d |  |
| 43 | 5 | **Color prep and printing** | 44d | 2015-09-28 08:00 | 2015-11-26 17:00 | 40 |  | 0d |  |
| 44 |  | Send to color house | 1d | 2015-09-28 08:00 | 2015-09-28 17:00 | 36 |  | 0d |  |
| 45 |  | Generate proofs | 10d | 2015-09-29 08:00 | 2015-10-12 17:00 | 44 |  | 0d |  |
| 46 |  | Print and ship | 30d | 2015-10-16 08:00 | 2015-11-26 17:00 | 45FS+3d |  | 0d |  |
| 47 | 6 | **Book launch prep** | 22d | 2015-09-29 08:00 | 2015-10-28 17:00 |  |  | 21d |  |
| 48 |  | Launch planning | 5d | 2015-09-29 08:00 | 2015-10-05 17:00 | 44 |  | 21d |  |
| 49 |  | Assign launch team members | 1d | 2015-10-06 08:00 | 2015-10-06 17:00 | 48 |  | 21d |  |
| 50 |  | Complete author questionnaire | 5d | 2015-10-07 08:00 | 2015-10-13 17:00 | 49 |  | 21d |  |
| 51 |  | Schedule author interviews | 1d | 2015-10-14 08:00 | 2015-10-14 17:00 | 50 |  | 21d |  |
| 52 |  | Design and order marketing material | 10d | 2015-10-15 08:00 | 2015-10-28 17:00 | 51 |  | 21d |  |

## Version 2 (saved 2025-09-27, file Advanced Tracking D_Start.mpp)

Last finish 2015-11-26 → 2026-01-22 (+3710d). Complete tasks 14 → 19.

Changed:

| ID | Task | Start | Finish | Duration | Complete | Total float | Other |
| --- | --- | --- | --- | --- | --- | --- | --- |
| 1 | **Editorial staff meeting** |  | 2015-07-06 09:00 → 2025-09-29 09:00 (+3738d) | 60.12d → 2730.12d |  | 103.88d → 83.88d | was named Họp nhân viên biên tập |
| 9 | Editorial staff meeting 8 | 2015-06-01 08:00 → 2025-09-29 08:00 (+3773d) | 2015-06-01 09:00 → 2025-09-29 09:00 (+3773d) |  |  | 128.88d → 83.88d | constraint start no earlier than 2015-06-01 08:00 → start no earlier than 2025-09-27 17:00 |
| 10 | Editorial staff meeting 9 | 2015-06-08 08:00 → 2025-09-29 08:00 (+3766d) | 2015-06-08 09:00 → 2025-09-29 09:00 (+3766d) |  |  | 123.88d → 83.88d | constraint start no earlier than 2015-06-08 08:00 → start no earlier than 2025-09-27 17:00 |
| 11 | Editorial staff meeting 10 | 2015-06-15 08:00 → 2025-09-29 08:00 (+3759d) | 2015-06-15 09:00 → 2025-09-29 09:00 (+3759d) |  |  | 118.88d → 83.88d | constraint start no earlier than 2015-06-15 08:00 → start no earlier than 2025-09-27 17:00 |
| 12 | Editorial staff meeting 11 | 2015-06-22 08:00 → 2025-09-29 08:00 (+3752d) | 2015-06-22 09:00 → 2025-09-29 09:00 (+3752d) |  |  | 113.88d → 83.88d | constraint start no earlier than 2015-06-22 08:00 → start no earlier than 2025-09-27 17:00 |
| 13 | Editorial staff meeting 12 | 2015-06-29 08:00 → 2025-09-29 08:00 (+3745d) | 2015-06-29 09:00 → 2025-09-29 09:00 (+3745d) |  |  | 108.88d → 83.88d | constraint start no earlier than 2015-06-29 08:00 → start no earlier than 2025-09-27 17:00 |
| 14 | Editorial staff meeting 13 | 2015-07-06 08:00 → 2025-09-29 08:00 (+3738d) | 2015-07-06 09:00 → 2025-09-29 09:00 (+3738d) |  |  | 103.88d → 83.88d | constraint start no earlier than 2015-07-06 08:00 → start no earlier than 2025-09-27 17:00 |
| 15 | **Acquisition** |  |  |  |  |  | was named Sự tiếp nhận |
| 21 | **Editorial** |  | 2015-07-03 17:00 → 2015-07-06 11:12 A (+3d) | 28d → 28.4d | 50% → 100% | 1.75d → none | was named Nhận bản thảo |
| 22 | Organize manuscript for copyedit |  |  |  |  |  | was named Biên tập nội dung; resources Đánh giá tác giả của nội dung biên tập; Đánh giá tác phẩm gốc [50%] → Hany Morcos; Dan Jump [50%] |
| 23 | Copyedit |  | 2015-06-17 10:00 A → 2015-06-17 12:00 A | 10.25d → 10.5d |  |  | was named Bản sao |
| 24 | Author review of copyedit | 2015-06-17 10:00 → 2015-06-17 13:00 A | 2015-07-01 10:00 → 2015-07-01 14:36 A | 10d → 10.2d | 0% → 100% | 1.75d → none |  |
| 25 | Copyedit incorp | 2015-06-26 15:00 → 2015-06-29 09:12 A (+3d) | 2015-07-03 17:00 → 2015-07-06 11:12 A (+3d) |  | 0% → 100% | 1.75d → none |  |
| 26 | Handoff to Production | 2015-07-03 17:00 → 2015-07-06 11:12 A (+3d) | 2015-07-03 17:00 → 2015-07-06 11:12 A (+3d) |  | 0% → 100% | 1.75d → none |  |
| 27 | **Design and Production** | 2015-07-06 08:00 → 2015-07-06 11:12 A | 2015-09-23 17:00 → 2025-11-21 12:00 (+3712d) | 58d → 2709.1d | 0% → 43% | 1.75d → 0.5d |  |
| 28 | Set pages | 2015-07-06 08:00 → 2015-07-06 11:12 A | 2015-07-24 17:00 → 2015-07-27 11:12 A (+3d) |  | 0% → 100% | 1.75d → none |  |
| 29 | Interior illustration design | 2015-07-06 08:00 → 2015-07-06 11:12 A | 2015-07-27 10:00 → 2015-07-29 17:00 A (+2d) | 15.25d → 17.6d | 0% → 100% | 1.75d → none |  |
| 30 | **Đánh giá các trang lần thứ** | 2015-07-27 10:00 → 2015-07-30 08:00 A (+3d) | 2015-09-07 10:00 → 2025-11-05 17:00 (+3712d) | 30d → 2680d | 0% → 7% | 1.75d → 0.5d | was named 1st Pages review |
| 31 | Hiệu đỉnh và lập chỉ mục | 2015-07-27 10:00 → 2015-07-30 08:00 A (+3d) | 2015-08-10 10:00 → 2025-10-08 17:00 (+3712d) |  | 0% → 20% | 1.75d → 0.5d | was named Proofread and index |
| 32 | Kết hợp đánh giá các trang lần thứ | 2015-08-10 10:00 → 2025-10-09 08:00 (+3713d) | 2015-08-24 10:00 → 2025-10-22 17:00 (+3712d) |  |  | 1.75d → 0.5d | was named Incorporate 1st Pages review; constraint none → start no earlier than 2025-09-27 17:00 |
| 33 | Send proofed pages to Production | 2015-08-24 10:00 → 2025-10-22 17:00 (+3712d) | 2015-08-24 10:00 → 2025-10-22 17:00 (+3712d) |  |  | 1.75d → 0.5d | constraint none → start no earlier than 2025-09-27 17:00 |
| 34 | Enter page corrections and index | 2015-08-24 10:00 → 2025-10-23 08:00 (+3713d) | 2015-08-31 10:00 → 2025-10-29 17:00 (+3712d) |  |  | 1.75d → 0.5d | constraint none → start no earlier than 2025-09-27 17:00 |
| 35 | Cover design | 2015-08-31 10:00 → 2025-10-30 08:00 (+3713d) | 2015-09-07 10:00 → 2025-11-05 17:00 (+3712d) |  |  | 1.75d → 0.5d | constraint none → start no earlier than 2025-09-27 17:00 |
| 36 | **2nd Pages review** | 2015-09-07 10:00 → 2025-11-06 08:00 (+3713d) | 2015-09-23 17:00 → 2025-11-21 12:00 (+3712d) | 12.75d → 11.5d |  | 1.75d → 0.5d |  |
| 37 | Proof and review | 2015-09-07 10:00 → 2025-11-06 08:00 (+3713d) | 2015-09-15 15:00 → 2025-11-14 12:00 (+3713d) |  |  | 1.75d → 0.5d | constraint none → start no earlier than 2025-09-27 17:00 |
| 38 | Send proofed pages to Production | 2015-09-15 15:00 → 2025-11-14 12:00 (+3713d) | 2015-09-15 15:00 → 2025-11-14 12:00 (+3713d) |  |  | 1.75d → 0.5d | constraint none → start no earlier than 2025-09-27 17:00 |
| 39 | Final review | 2015-09-17 08:00 → 2025-11-14 13:00 (+3711d) | 2015-09-23 17:00 → 2025-11-21 12:00 (+3712d) |  |  | 2d → 0.5d | constraint none → start no earlier than 2025-09-27 17:00 |
| 40 | **Design book's companion website** | 2015-09-07 10:00 → 2025-11-06 08:00 (+3713d) | 2015-09-21 10:00 → 2025-11-19 17:00 (+3712d) |  |  | 4.75d → 2d |  |
| 41 | Create mockup | 2015-09-07 10:00 → 2025-11-06 08:00 (+3713d) | 2015-09-17 10:00 → 2025-11-17 17:00 (+3714d) |  |  | 4.75d → 2d | constraint none → start no earlier than 2025-09-27 17:00 |
| 42 | Review with author | 2015-09-17 10:00 → 2025-11-18 08:00 (+3715d) | 2015-09-21 10:00 → 2025-11-19 17:00 (+3712d) |  |  | 4.75d → 2d | constraint none → start no earlier than 2025-09-27 17:00 |
| 43 | **Color prep and printing** | 2015-09-28 08:00 → 2025-11-24 08:00 (+3710d) | 2015-11-26 17:00 → 2026-01-22 17:00 (+3710d) |  |  |  |  |
| 44 | Send to color house | 2015-09-28 08:00 → 2025-11-24 08:00 (+3710d) | 2015-09-28 17:00 → 2025-11-24 17:00 (+3710d) |  |  |  | constraint none → start no earlier than 2025-09-27 17:00 |
| 45 | Generate proofs | 2015-09-29 08:00 → 2025-11-25 08:00 (+3710d) | 2015-10-12 17:00 → 2025-12-08 17:00 (+3710d) |  |  |  | constraint none → start no earlier than 2025-09-27 17:00 |
| 46 | Print and ship | 2015-10-16 08:00 → 2025-12-12 08:00 (+3710d) | 2015-11-26 17:00 → 2026-01-22 17:00 (+3710d) |  |  |  | constraint none → start no earlier than 2025-09-27 17:00 |
| 47 | **Book launch prep** | 2015-09-29 08:00 → 2025-11-25 08:00 (+3710d) | 2015-10-28 17:00 → 2025-12-24 17:00 (+3710d) |  |  |  |  |
| 48 | Launch planning | 2015-09-29 08:00 → 2025-11-25 08:00 (+3710d) | 2015-10-05 17:00 → 2025-12-01 17:00 (+3710d) |  |  |  | constraint none → start no earlier than 2025-09-27 17:00 |
| 49 | Assign launch team members | 2015-10-06 08:00 → 2025-12-02 08:00 (+3710d) | 2015-10-06 17:00 → 2025-12-02 17:00 (+3710d) |  |  |  | constraint none → start no earlier than 2025-09-27 17:00 |
| 50 | Complete author questionnaire | 2015-10-07 08:00 → 2025-12-03 08:00 (+3710d) | 2015-10-13 17:00 → 2025-12-09 17:00 (+3710d) |  |  |  | constraint none → start no earlier than 2025-09-27 17:00 |
| 51 | Schedule author interviews | 2015-10-14 08:00 → 2025-12-10 08:00 (+3710d) | 2015-10-14 17:00 → 2025-12-10 17:00 (+3710d) |  |  |  | constraint none → start no earlier than 2025-09-27 17:00 |
| 52 | Design and order marketing material | 2015-10-15 08:00 → 2025-12-11 08:00 (+3710d) | 2015-10-28 17:00 → 2025-12-24 17:00 (+3710d) |  |  |  | constraint none → start no earlier than 2025-09-27 17:00 |
